# TT-Cronograma v06 (ACTUAL)

Schedule from MS Project, 2019-10-08 to 2021-07-07, A marks actual dates.

## Calendars

- Estándar: Mon-Fri 09:00-13:00, 15:00-19:00; Sat-Sun off. Exceptions (off unless hours are given): 2020-03-16 (No hay clases), 2020-04-09 to 2020-04-17 (Vacaciones), 2020-05-01 (Dia del trabajo), 2020-08-03 to 2020-09-04 (Vacaciones de verano), 2020-09-16 (Dia inhabil 1), 2020-11-01 (Dia inhabil 2), 2020-12-14 to 2021-01-07 (Vacaciones de invierno).

## Schedule

| ID | WBS | Task | Type | Duration | Start | Finish | Predecessors | Complete | Remaining | Actual finish | Total slack | Constraint |
| --- | --- | --- | --- | --- | --- | --- | --- | --- | --- | --- | --- | --- |
| 1 | 1 | **Junta de status** |  | 185d | 2020-02-11 A | 2020-12-30 |  | 35% | 119.71d |  |  |  |
| 2 | 1.1 | Junta de status |  | 1d | 2020-02-11 A | 2020-02-11 A |  | 100% |  |  |  | start no earlier than 2020-02-11 |
| 3 | 1.2 | Junta de status |  | 1d | 2020-02-18 A | 2020-02-18 A |  | 100% |  |  |  | start no earlier than 2020-02-18 |
| 4 | 1.3 | Junta de status |  | 1d | 2020-03-04 A | 2020-03-04 A |  | 100% |  |  |  | start no earlier than 2020-03-04 |
| 5 | 1.4 | Junta de status |  | 1d | 2020-03-11 A | 2020-03-11 A |  | 100% |  |  |  | start no earlier than 2020-03-11 |
| 6 | 1.5 | Junta de status |  | 1d | 2020-03-31 A | 2020-03-31 A |  | 100% |  |  |  | start no earlier than 2020-03-25 |
| 7 | 1.6 | Junta de status |  | 1d | 2020-04-22 A | 2020-04-22 A |  | 100% |  |  |  | start no earlier than 2020-04-22 |
| 8 | 1.7 | Junta de status |  | 1d | 2020-05-20 | 2020-05-20 |  |  |  |  | 237d | start no earlier than 2020-05-20 |
| 9 | 1.8 | Junta de status |  | 1d | 2020-07-29 | 2020-07-29 |  |  |  |  | 187d | start no earlier than 2020-07-29 |
| 10 | 1.9 | Junta de status |  | 1d | 2020-09-07 | 2020-09-07 |  |  |  |  | 184d | start no earlier than 2020-08-12 |
| 11 | 1.10 | Junta de status |  | 1d | 2020-09-07 | 2020-09-07 |  |  |  |  | 184d | start no earlier than 2020-08-26 |
| 12 | 1.11 | Junta de status |  | 1d | 2020-09-09 | 2020-09-09 |  |  |  |  | 182d | start no earlier than 2020-09-09 |
| 13 | 1.12 | Junta de status |  | 1d | 2020-09-23 | 2020-09-23 |  |  |  |  | 173d | start no earlier than 2020-09-23 |
| 14 | 1.13 | Junta de status |  | 1d | 2020-10-07 | 2020-10-07 |  |  |  |  | 163d | start no earlier than 2020-10-07 |
| 15 | 1.14 | Junta de status |  | 1d | 2020-10-21 | 2020-10-21 |  |  |  |  | 153d | start no earlier than 2020-10-21 |
| 16 | 1.15 | Junta de status |  | 1d | 2020-11-04 | 2020-11-04 |  |  |  |  | 143d | start no earlier than 2020-11-04 |
| 17 | 1.16 | Junta de status |  | 1d | 2020-11-18 | 2020-11-18 |  |  |  |  | 133d | start no earlier than 2020-11-18 |
| 18 | 1.17 | Junta de status |  | 1d | 2020-12-02 | 2020-12-02 |  |  |  |  | 123d | start no earlier than 2020-12-02 |
| 19 | 2 | **Comunicación** |  | 144d? | 2019-10-08 A | 2020-05-07 A |  | 100% |  |  |  |  |
| 20 | 2.1 | **Iniciar proyecto** |  | 104d? | 2019-10-08 A | 2020-02-28 |  | 100% |  | 2020-02-21 |  |  |
| 21 | 2.1.1 | **Recopilar información acerca del dominio** |  | 54d | 2019-10-08 A | 2019-12-20 |  | 100% |  | 2019-11-06 |  |  |
| 22 | 2.1.1.1 | Análisis de la situación actual | manual | 20d | 2019-10-08 A | 2019-11-04 A |  | 100% |  |  |  |  |
| 23 | 2.1.1.2 | Identificar el alcance del proyecto | manual | 2d | 2019-11-05 A | 2019-11-06 A |  | 100% |  |  |  |  |
| 24 | 2.1.2 | **Documentar Protocolo** |  | 54d | 2019-10-08 A | 2019-12-20 |  | 100% |  | 2019-12-23 |  |  |
| 25 | 2.1.2.1 | Realización de protocolo | manual | 53d | 2019-10-08 A | 2019-12-19 A |  | 100% |  |  |  |  |
| 26 | 2.1.2.2 | Verificación de protocolo | manual | 1d | 2019-12-20 A | 2019-12-20 A | 25 | 100% |  |  |  |  |
| 27 | 2.1.2.3 | Validación de protocolo |  | 1d | 2019-12-23 A | 2019-12-23 A | 26 | 100% |  |  |  |  |

Notes:
- 5: 11 Con Profe Héctor / 18 Con Mtra. Julia

| ID | WBS | Task | Type | Duration | Start | Finish | Predecessors | Complete | Actual start | Actual finish | Constraint |
| --- | --- | --- | --- | --- | --- | --- | --- | --- | --- | --- | --- |
| 28 | 2.1.3 | **Toma de requerimientos** |  | 3d | 2020-02-13 A | 2020-02-17 A |  | 100% |  |  |  |
| 29 | 2.1.3.1 | Primera Reunión con el Cliente | manual | 1d | 2020-02-13 A | 2020-02-13 A |  | 100% |  |  |  |
| 30 | 2.1.3.2 | Identificar y capturar los requerimientos | manual | 2d | 2020-02-14 A | 2020-02-17 A | 29 | 100% |  |  |  |
| 31 | 2.1.4 | **Documentar la solicitud de trabajo(ST)** |  | 11d | 2020-02-14 | 2020-02-28 |  | 100% | 2020-02-18 | 2020-02-21 |  |
| 32 | 2.1.4.1 | Realización de ST | manual | 2d | 2020-02-18 A | 2020-02-19 A | 30 | 100% |  |  |  |
| 33 | 2.1.4.2 | Verificación de ST | manual | 1d | 2020-02-20 A | 2020-02-20 A | 32 | 100% |  |  |  |
| 34 | 2.1.4.3 | Validación de ST | manual | 1d | 2020-02-21 A | 2020-02-21 A | 33 | 100% |  |  |  |
| 35 | 2.2 | **Análisis de Requerimientos** |  | 47d | 2020-02-20 A | 2020-05-07 A |  | 100% |  |  |  |
| 36 | 2.2.1 | **Análisis de Requerimientos** |  | 2d | 2020-02-20 A | 2020-02-21 A |  | 100% |  |  |  |
| 37 | 2.2.1.1 | **Estructurar y priorizar los requerimientos** |  | 2d | 2020-02-20 A | 2020-02-21 A |  | 100% |  |  |  |
| 38 | 2.2.1.1.1 | Identificar requisitos funcionales | manual | 1d | 2020-02-20 A | 2020-02-20 A | 30 | 100% |  |  |  |
| 39 | 2.2.1.1.2 | Identificar requisitos no funcionales | manual | 1d | 2020-02-21 A | 2020-02-21 A | 38 | 100% |  |  |  |
| 40 | 2.2.2 | **Perfeccionamiento de requerimientos** |  | 36d | 2020-02-26 A | 2020-04-27 A |  | 100% |  |  |  |
| 41 | 2.2.2.1 | Detallar requerimientos | manual | 1d | 2020-04-27 A | 2020-04-27 A | 39 | 100% |  |  |  |
| 42 | 2.2.2.2 | Realizar Diagrama Conceptual | manual | 1d | 2020-02-26 A | 2020-02-26 A | 41 | 100% |  |  |  |
| 43 | 2.2.3 | **Documentar la especificación de Requerimientos** |  | 4d | 2020-04-27 A | 2020-04-30 A |  | 100% |  |  |  |
| 44 | 2.2.3.1 | Realizar SRS |  | 1d | 2020-04-27 A | 2020-04-27 A | 41 | 100% |  |  |  |
| 45 | 2.2.3.2 | Verificar SRS | manual | 1d | 2020-04-30 A | 2020-04-30 A | 44 | 100% |  |  |  |
| 46 | 2.2.4 | Realizar Registro de Trazabilidad |  | 1d | 2020-04-29 A | 2020-04-29 A | 44 | 100% |  |  |  |
| 47 | 2.2.5 | Verificación de requerimientos |  | 1d | 2020-04-30 A | 2020-04-30 A | 44 | 100% |  |  | start no earlier than 2020-04-30 |
| 48 | 2.2.6 | Validación de requerimientos | manual | 1d | 2020-05-07 A | 2020-05-07 A | 56 | 100% |  |  |  |
| 49 | 3 | **Planeación** |  | 47d | 2020-02-14 A | 2020-04-30 A |  | 100% |  |  |  |
| 50 | 3.1 | **Elaborar Plan de proyecto** |  | 8d | 2020-02-14 A | 2020-02-25 A |  | 100% |  |  |  |
| 51 | 3.1.1 | **Elaboración de plan de proyecto** |  | 2d | 2020-02-14 A | 2020-02-17 A |  | 100% |  |  |  |
| 52 | 3.1.1.1 | Identificar las Tareas específicas a realizar para producir los entregables | manual | 1d | 2020-02-14 A | 2020-02-14 A | 29 | 100% |  |  |  |
| 53 | 3.1.1.2 | Incluir las Tareas del proceso de Implementación de Software sobre verificación, validación y revisiones con los Clientes y el Equipo de Trabajo |  | 1d | 2020-02-14 A | 2020-02-17 A | 52 | 100% |  |  | finish no earlier than 2020-02-14 |
| 54 | 3.1.1.3 | Identificar las Tareas para realizar las Instrucciones de entrega. |  | 1d | 2020-02-17 A | 2020-02-17 A | 53 | 100% |  |  | finish no earlier than 2020-02-17 |
| 55 | 3.1.1.4 | Elaboración de Cronograma | manual | 2d | 2020-02-14 A | 2020-02-17 A |  | 100% |  |  |  |
| 56 | 3.1.2 | Verificación del Plan de Proyecto |  | 1d | 2020-02-18 A | 2020-02-18 A |  | 100% |  |  | finish no earlier than 2020-02-18 |
| 57 | 3.1.3 | Validación del Plan de Proyecto | manual | 2d | 2020-02-24 A | 2020-02-25 A | 56 | 100% |  |  |  |

| ID | WBS | Task | Type | Duration | Start | Finish | Predecessors | Complete | Remaining | Total slack | Constraint |
| --- | --- | --- | --- | --- | --- | --- | --- | --- | --- | --- | --- |
| 58 | 3.2 | **Establecer la Estrategia de Control de Versiones.** |  | 1d | 2020-02-14 A | 2020-02-14 A |  | 100% |  |  |  |
| 59 | 3.2.1 | Establecer y preparar el repositorio del proyecto |  | 1d | 2020-02-14 A | 2020-02-14 A |  | 100% |  |  | finish no earlier than 2020-02-14 |
| 60 | 3.3 | **Diseñar Plan de Riesgos y Contingencia** |  | 45d | 2020-02-18 A | 2020-04-30 A |  | 100% |  |  |  |
| 61 | 3.3.1 | Identificar y documentar los riesgos que pueden afectar el proyecto. | manual | 2d | 2020-02-18 A | 2020-02-19 A |  | 100% |  |  |  |
| 62 | 3.3.2 | Documentar plan de Riesgos, contingencia y mitigación | manual | 3d | 2020-02-20 A | 2020-02-24 A | 61 | 100% |  |  |  |
| 63 | 3.3.3 | Verificación de plan de Riesgos |  | 1d | 2020-04-30 A | 2020-04-30 A | 62, 3 | 100% |  |  | start no earlier than 2020-04-30 |
| 64 | 4 | Capacitación |  | 10d | 2020-02-25 A | 2020-03-09 A | 62 | 100% |  |  | start no earlier than 2020-02-18 |
| 65 | 5 | **Modelado** |  | 103d? | 2020-03-10 A | 2020-09-17 | 64 | 83% | 17.17d? | 190d |  |
| 66 | 5.1 | **Diseñar comportamiento del sistema** |  | 28d | 2020-03-10 A | 2020-04-28 A | 64 | 100% |  |  |  |
| 67 | 5.1.1 | Elaboración de diagrama de casos de uso |  | 3d | 2020-03-10 A | 2020-03-12 A | 64 | 100% |  |  |  |
| 68 | 5.1.2 | Elaboración de diagrama de secuencia |  | 7d | 2020-04-16 A | 2020-04-28 A | 67 | 100% |  |  | finish no earlier than 2020-04-28 |
| 69 | 5.1.3 | Elaboración de diagrama de actividades |  | 18d | 2020-03-13 A | 2020-04-17 A | 67 | 100% |  |  | finish no earlier than 2020-04-17 |
| 70 | 5.1.4 | Elaboración de diagrama de despliegue |  | 12d | 2020-03-18 A | 2020-04-28 A | 69 | 100% |  |  | finish no earlier than 2020-04-28 |
| 71 | 5.2 | **Diseñar arquitectura** |  | 96d? | 2020-03-20 A | 2020-09-17 | 66 | 97% | 2.67d? | 190d |  |
| 72 | 5.2.1 | **Definir conformación en subsistemas y Componente de Software** |  | 88d | 2020-03-20 A | 2020-08-02 A | 66 | 100% |  |  |  |
| 73 | 5.2.1.1 | Elaboración de diagrama de componentes |  | 2d | 2020-03-20 A | 2020-03-23 A | 66 | 100% |  |  | finish no earlier than 2020-03-24 |
| 74 | 5.2.1.2 | **Elaboración de diagrama de base de datos** |  | 86d | 2020-03-24 A | 2020-08-02 A | 73 | 100% |  |  |  |
| 75 | 5.2.1.2.1 | Diagrama de árbol |  | 2d | 2020-03-24 A | 2020-03-25 A |  | 100% |  |  |  |
| 76 | 5.2.1.2.2 | Diagrama de documentos |  | 60d | 2020-04-28 A | 2020-08-02 A | 75 | 100% |  |  | finish no earlier than 2020-08-02 |
| 77 | 5.2.1.3 | Elaboración de diagrama de clases |  | 2d | 2020-04-29 A | 2020-04-30 A | 68, 74 | 100% |  |  |  |
| 78 | 5.2.2 | **Definir conformación en subsistemas y Componente de Hardware** |  | 0d? | 2020-04-30 | 2020-04-30 | 77 |  |  | 263d |  |
| 79 | 5.2.2.1 | Diseño de sistema embebido | manual | 1d? | 2020-03-20 | 2020-03-20 |  |  |  |  |  |
| 80 | 5.2.2.2 | <Tarea nueva> | manual | 1d? | 2020-03-20 | 2020-03-20 |  |  |  |  |  |
| 81 | 5.2.3 | **Definir interfaces internas y externas.** |  | 74d | 2020-04-30 A | 2020-09-17 A | 72 | 100% |  |  |  |
| 82 | 5.2.3.1 | Diseño de Prototipos v01 |  | 2d | 2020-04-30 A | 2020-05-04 A | 72 | 100% |  |  | finish no earlier than 2020-05-04 |
| 83 | 5.2.3.2 | Diseño de Prototipo v02 | manual | 2d | 2020-09-16 A | 2020-09-17 A |  | 100% |  |  |  |
| 84 | 5.3 | Verificar el Diseño de Software | milestone | 0d | 2020-05-05 A | 2020-05-26 A | 82 | 100% |  |  | finish no earlier than 2020-05-26 |
| 85 | 5.4 | Validar del Diseño de Software |  | 2d | 2020-05-27 | 2020-05-28 | 84 |  |  | 244d |  |

| ID | WBS | Task | Type | Duration | Start | Finish | Predecessors | Complete | Total slack | Free slack | Constraint |
| --- | --- | --- | --- | --- | --- | --- | --- | --- | --- | --- | --- |
| 86 | 5.5 | **Definir las Instrucciones de Entrega para los entregables** |  | 21d | 2020-05-06 A | 2020-06-03 A | 84 | 100% |  |  |  |
| 87 | 5.5.1 | Definir las tareas requeridas para realizar las Instrucciones de Entrega |  | 1d | 2020-05-06 A | 2020-05-06 A | 84 | 100% |  |  | finish no earlier than 2020-04-27 |
| 88 | 5.5.2 | Definir el contenido y estructura de cada producto |  | 1d | 2020-05-06 A | 2020-05-06 A | 84 | 100% |  |  | finish no earlier than 2020-04-28 |
| 89 | 5.5.3 | Definir los medios para entregar cada producto software |  | 1d | 2020-05-06 A | 2020-05-06 A | 84 | 100% |  |  | finish no earlier than 2020-04-29 |
| 90 | 5.5.4 | Verificar Formulario de Instrucciones de Entrega |  | 1d | 2020-06-03 A | 2020-06-03 A | 89 | 100% |  |  | finish no earlier than 2020-06-03 |
| 91 | 5.5.5 | Validar Formulario de Instrucciones de Entrega |  | 1d | 2020-05-29 A | 2020-05-29 A | 90 | 100% |  |  | finish no earlier than 2020-05-07 |
| 92 | 5.6 | **Diseñar Casos de Prueba y Procedimientos de Prueba** |  | 15d | 2020-05-26 | 2020-06-15 | 86 |  | 0d |  |  |
| 93 | 5.6.1 | **Identificar de necesidades de las pruebas unitarias , de integración y de sistema** |  | 5d | 2020-05-26 | 2020-06-01 | 86 |  | 0d |  |  |
| 94 | 5.6.1.1 | Identificación de secciones para P. unitarias | manual | 1d | 2020-05-26 | 2020-05-26 |  |  |  |  |  |
| 95 | 5.6.1.2 | Identificación de secciones para P. Integración | manual | 2d | 2020-05-27 | 2020-05-28 | 94 |  |  |  |  |
| 96 | 5.6.1.3 | Identificación de secciones para P. Sistema | manual | 2d | 2020-05-29 | 2020-06-01 | 95 |  |  |  |  |
| 97 | 5.6.2 | **Diseñar los Casos de Prueba** |  | 7d | 2020-06-04 | 2020-06-12 |  |  | 2d |  |  |
| 98 | 5.6.2.1 | Análisis y aplicación de técnicas de diseño de pruebas |  | 1d | 2020-06-04 | 2020-06-04 |  |  | 228d | 0d |  |
| 99 | 5.6.2.2 | **Identificación de casos de prueba** |  | 6d | 2020-06-05 | 2020-06-12 | 98 |  | 228d |  |  |
| 100 | 5.6.2.2.1 | Identificacion de Casos de Prueba Unitarias |  | 2d | 2020-06-05 | 2020-06-08 | 94 |  | 228d | 0d |  |
| 101 | 5.6.2.2.2 | Identificacion de Casos de Prueba Integración |  | 2d | 2020-06-09 | 2020-06-10 | 100 |  | 228d | 0d |  |
| 102 | 5.6.2.2.3 | Identificacion de Casos de Prueba Sistema |  | 2d | 2020-06-11 | 2020-06-12 | 101 |  | 228d | 0d |  |
| 103 | 5.6.2.3 | **Establecer los procedimientos de prueba** |  | 5d | 2020-06-08 | 2020-06-12 |  |  | 0d |  |  |
| 104 | 5.6.2.3.1 | Establecer los procedimientos de p. unitaria | manual | 1d | 2020-06-08 | 2020-06-08 | 100 |  |  |  |  |
| 105 | 5.6.2.3.2 | Establecer los procedimientos de p.Integración | manual | 1d | 2020-06-10 | 2020-06-10 | 101 |  |  |  |  |
| 106 | 5.6.2.3.3 | Establecer los procedimientos de p.Sistema | manual | 1d | 2020-06-12 | 2020-06-12 | 102 |  |  |  |  |
| 107 | 5.6.3 | Verificar Casos de Prueba y Procedimientos de Prueba |  | 1d | 2020-06-15 | 2020-06-15 | 103 |  | 216d |  | finish no earlier than 2020-05-21 |
| 108 | 5.7 | **Actualizar el Repositorio** |  | 3d | 2020-06-16 | 2020-06-18 | 92 |  | 229d |  |  |
| 109 | 5.7.1 | Actualizar el Registro de Trazabilidad incorporando los Casos de Prueba y Procedimientos de Prueba. |  | 1d | 2020-06-16 | 2020-06-16 | 92 |  | 216d | 0d | finish no earlier than 2020-04-30 |
| 110 | 5.7.2 | Incorporar el Diseño de Software y el Registro de Trazabilidad a la Configuración de Software como parte de la línea base. |  | 1d | 2020-06-17 | 2020-06-17 | 109 |  | 216d | 0d | finish no earlier than 2020-04-30 |
| 111 | 5.7.3 | Incorporar los Casos de Prueba y Procedimientos de Prueba al Repositorio del Proyecto. |  | 1d | 2020-06-18 | 2020-06-18 | 110 |  | 216d |  | finish no earlier than 2020-04-30 |
| 113 | 6 | Preparación de Reporte Final TT I |  | 13d | 2020-06-01 A | 2020-06-17 A |  | 100% |  |  | finish no earlier than 2020-06-17 |
| 114 | 7 | Entrega Reporte Final |  | 1d | 2020-06-23 A | 2020-06-23 A |  | 100% |  |  | start no earlier than 2020-06-23 |
| 115 | 8 | Preparación TT I |  | 11d | 2020-06-17 A | 2020-07-01 A |  | 100% |  |  | finish no earlier than 2020-07-01 |
| 116 | 9 | Presentación TT I |  | 1d | 2020-07-02 A | 2020-07-02 A | 115 | 100% |  |  |  |

| ID | WBS | Task | Duration | Start | Finish | Predecessors | Complete | Remaining | Total slack | Free slack | Constraint |
| --- | --- | --- | --- | --- | --- | --- | --- | --- | --- | --- | --- |
| 117 | 10 | **Construcción** | 58d | 2020-07-03 A | 2020-10-28 |  | 23% | 44.91d |  |  |  |
| 118 | 10.1 | **Codificación** | 201d | 2020-07-03 A | 2021-06-11 |  | 31% | 137.76d | 6d |  |  |
| 119 | 10.1.1 | **Construir y codificar los componentes o módulos de Software** | 44d | 2020-07-03 A | 2020-10-08 |  | 27% | 32.11d |  |  |  |
| 120 | 10.1.1.1 | Construcción de módulo de base de datos | 8d | 2020-07-03 A | 2020-07-14 |  | 50% | 4d | 8d | 0d | start no earlier than 2020-07-03 |
| 121 | 10.1.1.2 | Construcción de sistema de visión artificial | 10d | 2020-07-15 A | 2020-07-28 | 120 | 80% | 2d | 14d | 0d |  |
| 122 | 10.1.1.3 | Construcción de sistema de reconocimiento | 20d | 2020-07-29 A | 2020-09-30 | 121 | 70% | 6d | 169d | 0d | start no earlier than 2020-07-01 |
| 123 | 10.1.1.4 | Codificación de módulo de diagnostico | 5d | 2020-07-15 | 2020-07-21 | 120 |  |  | 8d | 0d |  |
| 124 | 10.1.1.5 | Construcción de interfaz grafica de usuario | 10d | 2020-07-22 A | 2020-09-08 | 123 | 80% | 2d | 2.7d | 0d |  |
| 125 | 10.1.1.6 | Codificar módulo bluetooth para método de entrada | 3d | 2020-09-09 A | 2020-09-11 | 124 | 90% | 0.3d | 180d | 0d |  |
| 126 | 10.1.1.7 | Codificación de sistema embebido | 8d | 2020-09-14 A | 2020-09-24 A | 125 | 100% |  |  |  |  |
| 127 | 10.1.1.8 | Codificación de módulo generador de reportes | 5d | 2020-09-25 A | 2020-10-01 | 126 | 30% | 3.5d | 16.2d | 0d |  |
| 128 | 10.1.1.9 | Codificación de módulo de respaldo y restauración | 162d | 2020-10-02 A | 2021-06-11 | 127 | 10% | 145.8d | 0d |  | finish no earlier than 2021-06-11 |
| 129 | 10.1.2 | **Construir los componentes o módulos de Hardware** | 15d | 2020-10-01 A | 2020-10-21 A |  | 100% |  |  |  |  |
| 130 | 10.1.2.1 | Integración de módulo bluetooth | 4d | 2020-10-01 A | 2020-10-06 A | 122 | 100% |  |  |  |  |
| 131 | 10.1.2.2 | Integración de sensor angular | 4d | 2020-10-07 A | 2020-10-12 A | 130 | 100% |  |  |  |  |
| 132 | 10.1.2.3 | Montaje en plicómetro | 7d | 2020-10-13 A | 2020-10-21 A | 131 | 100% |  |  |  |  |
| 133 | 10.2 | **Realizar Pruebas** | 71d | 2020-07-15 | 2020-11-26 |  |  |  | 0d |  |  |
| 134 | 10.2.1 | **Aplicar Casos de Pruebas Unitarias** | 38d | 2020-07-15 | 2020-10-12 |  |  |  | 0d |  |  |
| 135 | 10.2.1.1 | **Prueba de módulo de base de datos** | 4d | 2020-07-15 | 2020-07-20 |  |  |  |  |  |  |
| 136 | 10.2.1.1.1 | Codificar las Pruebas | 2d | 2020-07-15 | 2020-07-16 | 120 |  |  | 152d | 0d |  |
| 137 | 10.2.1.1.2 | Ejecutar las Pruebas | 2d | 2020-07-17 | 2020-07-20 | 136 |  |  | 152d |  |  |
| 138 | 10.2.1.1.3 | Analizar y documentar los resultados | 2d | 2020-07-17 | 2020-07-20 | 136 |  |  | 152d |  |  |
| 139 | 10.2.1.2 | **Prueba de sistema de visión artificial** | 3d | 2020-07-29 | 2020-07-31 |  |  |  |  |  |  |
| 140 | 10.2.1.2.1 | Codificar las Pruebas | 2d | 2020-07-29 | 2020-07-30 | 121 |  |  | 162d | 0d |  |
| 141 | 10.2.1.2.2 | Ejecutar las Pruebas | 1d | 2020-07-31 | 2020-07-31 | 140 |  |  | 162d |  |  |
| 142 | 10.2.1.2.3 | Analizar y documentar los resultados | 1d | 2020-07-31 | 2020-07-31 | 140 |  |  | 162d |  |  |

| ID | WBS | Task | Type | Duration | Start | Finish | Predecessors | Total slack | Free slack |
| --- | --- | --- | --- | --- | --- | --- | --- | --- | --- |
| 143 | 10.2.1.3 | **Prueba de sistema de reconocimiento** |  | 3d | 2020-10-01 | 2020-10-05 |  | 169d |  |
| 144 | 10.2.1.3.1 | Codificar las Pruebas |  | 1d | 2020-10-01 | 2020-10-01 | 122 | 156d | 0d |
| 145 | 10.2.1.3.2 | Ejecutar las Pruebas |  | 1d | 2020-10-02 | 2020-10-02 | 144 | 157d |  |
| 146 | 10.2.1.3.3 | Analizar y documentar los resultados |  | 2d | 2020-10-02 | 2020-10-05 | 144 | 156d |  |
| 147 | 10.2.1.4 | **Prueba de módulo de diagnostico** |  | 4d | 2020-07-22 | 2020-07-27 |  |  |  |
| 148 | 10.2.1.4.1 | Codificar las Pruebas |  | 2d | 2020-07-22 | 2020-07-23 | 123 | 180d | 0d |
| 149 | 10.2.1.4.2 | Ejecutar las Pruebas |  | 2d | 2020-07-24 | 2020-07-27 | 148 | 180d |  |
| 150 | 10.2.1.4.3 | Analizar y documentar los resultados |  | 2d | 2020-07-24 | 2020-07-27 | 148 | 180d |  |
| 151 | 10.2.1.5 | **Prueba de interfaz grafica de usuario** |  | 4d | 2020-09-09 | 2020-09-14 |  | 183d |  |
| 152 | 10.2.1.5.1 | Codificar las Pruebas |  | 2d | 2020-09-09 | 2020-09-10 | 124 | 170d | 0d |
| 153 | 10.2.1.5.2 | Ejecutar las Pruebas |  | 2d | 2020-09-11 | 2020-09-14 | 152 | 170d |  |
| 154 | 10.2.1.5.3 | Analizar y documentar los resultados |  | 2d | 2020-09-11 | 2020-09-14 | 152 | 170d |  |
| 155 | 10.2.1.6 | **Prueba de módulo bluetooth para método de entrada** |  | 4d | 2020-09-14 | 2020-09-18 |  | 180d |  |
| 156 | 10.2.1.6.1 | Codificar las Pruebas |  | 2d | 2020-09-14 | 2020-09-15 | 125 | 167d | 0d |
| 157 | 10.2.1.6.2 | Ejecutar las Pruebas |  | 2d | 2020-09-17 | 2020-09-18 | 156 | 167d |  |
| 158 | 10.2.1.6.3 | Analizar y documentar los resultados |  | 2d | 2020-09-17 | 2020-09-18 | 156 | 167d |  |
| 159 | 10.2.1.7 | **Prueba de sistema embebido** |  | 2d | 2020-09-25 | 2020-09-28 |  |  |  |
| 160 | 10.2.1.7.1 | Codificar las Pruebas | manual | 1d | 2020-09-25 | 2020-09-25 | 126 |  |  |
| 161 | 10.2.1.7.2 | Ejecutar las Pruebas |  | 1d | 2020-09-28 | 2020-09-28 | 160 | 161d |  |
| 162 | 10.2.1.7.3 | Analizar y documentar los resultados |  | 1d | 2020-09-28 | 2020-09-28 | 160 | 161d |  |
| 163 | 10.2.1.8 | **Prueba de módulo generador de reportes** |  | 2d | 2020-10-02 | 2020-10-05 |  |  |  |
| 164 | 10.2.1.8.1 | Codificar las Pruebas | manual | 1d | 2020-10-02 | 2020-10-02 | 127 |  |  |
| 165 | 10.2.1.8.2 | Ejecutar las Pruebas |  | 1d | 2020-10-05 | 2020-10-05 | 164 | 156d |  |
| 166 | 10.2.1.8.3 | Analizar y documentar los resultados |  | 1d | 2020-10-05 | 2020-10-05 | 164 | 156d |  |

| ID | WBS | Task | Type | Duration | Start | Finish | Predecessors | Total slack | Free slack |
| --- | --- | --- | --- | --- | --- | --- | --- | --- | --- |
| 167 | 10.2.1.9 | **Prueba de módulo de respaldo y restauración** |  | 2d | 2020-10-09 | 2020-10-12 |  |  |  |
| 168 | 10.2.1.9.1 | Codificar las Pruebas | manual | 1d | 2020-10-09 | 2020-10-09 | 128 |  |  |
| 169 | 10.2.1.9.2 | Ejecutar las Pruebas |  | 1d | 2020-10-12 | 2020-10-12 | 168 | 118d |  |
| 170 | 10.2.1.9.3 | Analizar y documentar los resultados |  | 1d | 2020-10-12 | 2020-10-12 | 168 | 118d |  |
| 171 | 10.2.2 | **Realizar pruebas de Integración** |  | 25d | 2020-10-13 | 2020-11-16 | 167 | 131d | 0d |
| 172 | 10.2.2.1 | **Prueba de módulo de base de datos** |  | 4d | 2020-10-13 | 2020-10-16 |  | 131d | 0d |
| 173 | 10.2.2.1.1 | Codificar las Pruebas |  | 2d | 2020-10-13 | 2020-10-14 | 135 | 118d | 0d |
| 174 | 10.2.2.1.2 | Ejecutar las Pruebas |  | 2d | 2020-10-15 | 2020-10-16 | 173 | 118d |  |
| 175 | 10.2.2.1.3 | Analizar y documentar los resultados |  | 2d | 2020-10-15 | 2020-10-16 | 173 | 118d |  |
| 176 | 10.2.2.2 | **Prueba de sistema de visión artificial** |  | 3d | 2020-10-13 | 2020-10-15 |  | 150d | 0d |
| 177 | 10.2.2.2.1 | Codificar las Pruebas |  | 2d | 2020-10-13 | 2020-10-14 | 139 | 137d | 0d |
| 178 | 10.2.2.2.2 | Ejecutar las Pruebas |  | 1d | 2020-10-15 | 2020-10-15 | 177 | 137d |  |
| 179 | 10.2.2.2.3 | Analizar y documentar los resultados |  | 1d | 2020-10-15 | 2020-10-15 | 177 | 137d |  |
| 180 | 10.2.2.3 | **Prueba de sistema de reconocimiento** |  | 3d | 2020-10-16 | 2020-10-20 |  | 150d |  |
| 181 | 10.2.2.3.1 | Codificar las Pruebas |  | 1d | 2020-10-16 | 2020-10-16 | 176 | 137d | 0d |
| 182 | 10.2.2.3.2 | Ejecutar las Pruebas |  | 1d | 2020-10-19 | 2020-10-19 | 181 | 138d |  |
| 183 | 10.2.2.3.3 | Analizar y documentar los resultados |  | 2d | 2020-10-19 | 2020-10-20 | 181 | 137d |  |
| 184 | 10.2.2.4 | **Prueba de interfaz grafica de usuario** |  | 4d | 2020-10-19 | 2020-10-22 |  | 131d | 0d |
| 185 | 10.2.2.4.1 | Codificar las Pruebas |  | 2d | 2020-10-19 | 2020-10-20 | 172 | 118d | 0d |
| 186 | 10.2.2.4.2 | Ejecutar las Pruebas |  | 2d | 2020-10-21 | 2020-10-22 | 185 | 118d |  |
| 187 | 10.2.2.4.3 | Analizar y documentar los resultados |  | 2d | 2020-10-21 | 2020-10-22 | 185 | 118d |  |
| 188 | 10.2.2.5 | **Prueba de módulo bluetooth para método de entrada** |  | 4d | 2020-10-23 | 2020-10-28 |  | 131d | 0d |
| 189 | 10.2.2.5.1 | Codificar las Pruebas |  | 2d | 2020-10-23 | 2020-10-26 | 184 | 118d | 0d |
| 190 | 10.2.2.5.2 | Ejecutar las Pruebas |  | 2d | 2020-10-27 | 2020-10-28 | 189 | 118d |  |
| 191 | 10.2.2.5.3 | Analizar y documentar los resultados |  | 2d | 2020-10-27 | 2020-10-28 | 189 | 118d |  |

| ID | WBS | Task | Duration | Start | Finish | Predecessors | Total slack | Free slack | Constraint |
| --- | --- | --- | --- | --- | --- | --- | --- | --- | --- |
| 192 | 10.2.2.6 | **Prueba de sistema embebido** | 3d | 2020-10-29 | 2020-11-02 |  | 131d | 0d |  |
| 193 | 10.2.2.6.1 | Codificar las Pruebas | 2d | 2020-10-29 | 2020-10-30 | 188 | 118d | 0d |  |
| 194 | 10.2.2.6.2 | Ejecutar las Pruebas | 1d | 2020-11-02 | 2020-11-02 | 193 | 118d |  |  |
| 195 | 10.2.2.6.3 | Analizar y documentar los resultados | 1d | 2020-11-02 | 2020-11-02 | 193 | 118d |  |  |
| 196 | 10.2.2.7 | **Prueba de módulo de diagnostico** | 4d | 2020-11-03 | 2020-11-06 |  | 131d | 0d |  |
| 197 | 10.2.2.7.1 | Codificar las Pruebas | 2d | 2020-11-03 | 2020-11-04 | 192 | 118d | 0d |  |
| 198 | 10.2.2.7.2 | Ejecutar las Pruebas | 2d | 2020-11-05 | 2020-11-06 | 197 | 118d |  |  |
| 199 | 10.2.2.7.3 | Analizar y documentar los resultados | 2d | 2020-11-05 | 2020-11-06 | 197 | 118d |  |  |
| 200 | 10.2.2.8 | **Prueba de módulo generador de reportes** | 4d | 2020-11-09 | 2020-11-12 |  | 131d | 0d |  |
| 201 | 10.2.2.8.1 | Codificar las Pruebas | 2d | 2020-11-09 | 2020-11-10 | 196 | 118d | 0d |  |
| 202 | 10.2.2.8.2 | Ejecutar las Pruebas | 2d | 2020-11-11 | 2020-11-12 | 201 | 118d |  |  |
| 203 | 10.2.2.8.3 | Analizar y documentar los resultados | 2d | 2020-11-11 | 2020-11-12 | 201 | 118d |  |  |
| 204 | 10.2.2.9 | **Prueba de módulo de respaldo y restauración** | 2d | 2020-11-13 | 2020-11-16 |  | 131d | 0d |  |
| 205 | 10.2.2.9.1 | Codificar las Pruebas | 1d | 2020-11-13 | 2020-11-13 | 200 | 118d | 0d |  |
| 206 | 10.2.2.9.2 | Ejecutar las Pruebas | 1d | 2020-11-16 | 2020-11-16 | 205 | 118d |  |  |
| 207 | 10.2.2.9.3 | Analizar y documentar los resultados | 1d | 2020-11-16 | 2020-11-16 | 205 | 118d |  |  |
| 208 | 10.2.3 | **Realizar pruebas de Sistema** | 6d | 2020-11-17 | 2020-11-24 | 171 | 131d |  |  |
| 209 | 10.2.3.1 | Establecer el ambiente de prueba. | 3d | 2020-11-17 | 2020-11-19 | 204 | 118d | 0d | start no earlier than 2020-09-30 |
| 210 | 10.2.3.2 | Ejecución de las iteraciones de pruebas | 3d | 2020-11-20 | 2020-11-24 | 209 | 120d |  | start no earlier than 2020-10-05 |
| 211 | 10.2.3.3 | Analizar y documentar los resultados | 3d | 2020-11-20 | 2020-11-24 | 209 | 118d | 0d | start no earlier than 2020-10-08 |
| 212 | 10.2.4 | **Cierre del procedimiento de pruebas** | 2d | 2020-11-25 | 2020-11-26 | 211 | 131d | 0d |  |
| 213 | 10.2.4.1 | Documentar los resultados en el Reporte de Pruebas. | 2d | 2020-11-25 | 2020-11-26 | 211 | 118d |  | start no earlier than 2020-10-07 |
| 214 | 11 | **Despliegue** | 9d? | 2020-11-27 | 2020-12-09 | 117 | 131d |  |  |
| 215 | 11.1 | **Cierre de proyecto** | 9d? | 2020-11-27 | 2020-12-09 | 133 | 131d |  |  |
| 216 | 11.1.1 | **Documentar el Manual de Mantenimiento** | 3d? | 2020-11-27 | 2020-12-01 |  | 131d | 0d |  |
| 217 | 11.1.1.1 | Realizar Manual de Mantenimiento. | 1d? | 2020-11-27 | 2020-11-27 | 117 | 118d | 0d |  |
| 218 | 11.1.1.2 | Verificar Manual de Mantenimiento. | 1d | 2020-11-30 | 2020-11-30 | 217 | 118d | 0d |  |
| 219 | 11.1.1.3 | Aprobar Manual de Mantenimiento. | 1d | 2020-12-01 | 2020-12-01 | 218 | 118d |  |  |
| 220 | 11.1.2 | Incorporar el Manual de Mantenimiento a la línea base de la Configuración del Software | 1d | 2020-11-27 | 2020-11-27 | 212 | 126d |  |  |

| ID | WBS | Task | Type | Duration | Start | Finish | Predecessors | Total slack | Free slack | Constraint |
| --- | --- | --- | --- | --- | --- | --- | --- | --- | --- | --- |
| 221 | 11.1.3 | **Entrega de Producto** |  | 2d | 2020-12-02 | 2020-12-03 |  | 131d |  |  |
| 222 | 11.1.3.1 | Comprender la Configuración de Software. |  | 2d | 2020-12-02 | 2020-12-03 | 216 | 118d | 0d |  |
| 223 | 11.1.4 | **Formalizar la conclusión del proyecto** |  | 3d | 2020-12-04 | 2020-12-08 |  | 131d | 0d |  |
| 224 | 11.1.4.1 | Obtener la copia aprobada del Formulario de Instrucciones de Entrega |  | 1d | 2020-12-04 | 2020-12-04 | 222 | 118d | 0d | finish no earlier than 2020-10-21 |
| 225 | 11.1.4.2 | Realizar entrega |  | 1d | 2020-12-07 | 2020-12-07 | 224 | 118d | 0d | finish no earlier than 2020-10-22 |
| 226 | 11.1.4.3 | Firma de Acta de Aceptación |  | 1d | 2020-12-08 | 2020-12-08 | 225 | 118d |  | finish no earlier than 2020-10-23 |
| 227 | 11.1.5 | Actualizar el Repositorio del Proyecto. |  | 1d | 2020-12-09 | 2020-12-09 | 223 | 118d |  | start no earlier than 2020-10-26 |
| 228 | 12 | Preparación de Reporte Final TT II |  | 18d | 2021-06-02 | 2021-06-25 |  | 8d |  | finish no earlier than 2021-06-25 |
| 229 | 13 | Entrega Reporte Final TT II | milestone | 0d | 2021-07-01 | 2021-07-01 |  | 0d |  | start no earlier than 2021-07-01 |
| 230 | 14 | Preparación Presentación TT II |  | 5d | 2021-07-01 | 2021-07-07 | 229 | 0d |  | finish no earlier than 2021-07-04 |
| 231 | 15 | Presentación TT II |  | 1d | 2021-07-05 | 2021-07-05 |  | 2d |  | start no earlier than 2021-07-05 |
