# TT-Cronograma v05 (ACTUAL)

Schedule from MS Project, 2020-07-30 to 2021-04-13, A marks actual dates.

## Calendars

- Estándar: Mon-Fri 09:00-13:00, 15:00-19:00; Sat-Sun off. Exceptions (off unless hours are given): 2020-07-30 to 2020-09-04 16:00-18:00, 19:00-20:00 (Perido de recuperación, recurring), 2020-09-28 to 2021-03-11 09:00-12:00, 13:00-16:30 (TT2, recurring), 2020-12-24 to 2020-12-25 (Navidad), 2020-12-31 to 2021-01-01 (Año nuevo).

## Resources

| Resource |
| --- |
| Hilario Abraham Rodarte España |
| Montserrat Silva Cordero |
| Héctor Alejandro Acuña Cid |
| Julia Elena Hernández Ríos |
| HARE |
| MSC |
| HAAC |
| JEHR |
| VCH |

## Schedule

| ID | WBS | Task | Type | Duration | Start | Finish | Predecessors | Remaining | Total slack | Free slack | Constraint | Resources | Work | Actual work |
| --- | --- | --- | --- | --- | --- | --- | --- | --- | --- | --- | --- | --- | --- | --- |
| 1 | 1 | **Junta de Estatus** |  | 90.88d | 2020-08-14 | 2021-01-29 |  |  | 0d |  |  |  |  |  |
| 2 | 1.1 | Junta de Estatus 1 | manual | 1d | 2020-08-14 | 2020-08-14 |  |  |  |  | start no earlier than 2020-08-14 |  |  |  |
| 3 | 1.2 | Junta de Estatus 2 | manual | 1d | 2020-08-28 | 2020-08-28 |  |  |  |  | start no earlier than 2020-08-28 |  |  |  |
| 4 | 1.3 | Junta de Estatus 3 | manual | 1d | 2020-09-11 | 2020-09-11 |  |  |  |  | start no earlier than 2020-09-11 |  |  |  |
| 5 | 1.4 | Junta de Estatus 4 | manual | 1d | 2020-09-25 | 2020-09-25 |  |  |  |  | start no earlier than 2020-09-25 |  |  |  |
| 6 | 1.5 | Junta de Estatus 5 | manual | 1d | 2020-10-09 | 2020-10-10 |  |  |  |  | start no earlier than 2020-10-09 |  |  |  |
| 7 | 1.6 | Junta de Estatus 6 | manual | 1d | 2020-10-23 | 2020-10-24 |  |  |  |  | start no earlier than 2020-10-23 |  |  |  |
| 8 | 1.7 | Junta de Estatus 7 | manual | 1d | 2020-11-06 | 2020-11-07 |  |  |  |  | start no earlier than 2020-11-06 |  |  |  |
| 9 | 1.8 | Junta de Estatus 8 | manual | 1d | 2020-11-20 | 2020-11-21 |  |  |  |  | start no earlier than 2020-11-20 |  |  |  |
| 10 | 1.9 | Junta de Estatus 9 | manual | 1d | 2020-12-04 | 2020-12-05 |  |  |  |  | start no earlier than 2020-12-04 |  |  |  |
| 11 | 1.10 | Junta de Estatus 10 | manual | 1d | 2020-12-18 | 2020-12-19 |  |  |  |  | start no earlier than 2020-12-18 |  |  |  |
| 12 | 1.11 | Junta de Estatus 11 | manual | 1d | 2021-01-01 | 2021-01-01 |  |  |  |  | start no earlier than 2021-01-01 |  |  |  |
| 13 | 1.12 | Junta de Estatus 12 | manual | 1d | 2021-01-15 | 2021-01-15 |  |  |  |  | start no earlier than 2021-01-15 |  |  |  |
| 14 | 1.13 | Junta de Estatus 13 | manual | 1d | 2021-01-29 | 2021-01-29 |  |  |  |  | start no earlier than 2021-01-29 |  |  |  |
| 15 | 2 | **Modelado** |  | 31.5d | 2020-07-30 A | 2020-10-07 |  | 31.5d | 110d |  |  | Hilario Abraham Rodarte España; Montserrat Silva Cordero | 1914h | 8h |
| 16 | 2.1 | **Diseñar arquitectura** |  | 31.5d | 2020-07-30 A | 2020-10-07 |  | 31.5d | 110d |  |  |  | 290h | 8h |
| 17 | 2.1.1 | **Definir conformación en subsistemas y Componente de Software** |  | 1d | 2020-07-30 A | 2020-08-03 |  | 1d | 140.5d |  |  |  | 18h | 8h |
| 18 | 2.1.1.1 | **Elaboración de diagrama de base de datos** |  | 1d | 2020-07-30 A | 2020-08-03 |  | 1d | 140.5d |  |  | Montserrat Silva Cordero | 18h | 8h |
| 19 | 2.1.1.1.1 | Elaboración de diccionario de datos |  | 0.5d | 2020-07-30 | 2020-07-31 |  |  | 0d |  |  | Montserrat Silva Cordero | 4h |  |
| 20 | 2.1.1.1.2 | Esquema gráfico de colecciones |  | 0.5d | 2020-07-31 | 2020-08-03 | 19 |  | 140.5d |  |  | Montserrat Silva Cordero | 4h |  |
| 21 | 2.1.2 | **Definir conformación en subsistemas y Componente de Hardware** |  | 10d | 2020-09-18 | 2020-10-05 |  |  | 110d |  |  |  | 160h |  |
| 22 | 2.1.2.1 | **Sistemas de reconocimiento y visión** |  | 10d | 2020-09-18 | 2020-10-05 | 30 |  | 110d |  |  |  | 160h |  |
| 23 | 2.1.2.1.1 | Análisis del planteamiento |  | 3d | 2020-09-18 | 2020-09-23 |  |  | 110d | 0d |  | Hilario Abraham Rodarte España; Montserrat Silva Cordero | 48h |  |
| 24 | 2.1.2.1.2 | Propuesta de planteamiento |  | 3d | 2020-09-23 | 2020-09-28 | 23 |  | 110d | 0d |  | Hilario Abraham Rodarte España; Montserrat Silva Cordero | 48h |  |
| 25 | 2.1.2.1.3 | Definición de planteamiento |  | 1d | 2020-09-28 | 2020-09-29 | 24 |  | 110d | 0d |  | Hilario Abraham Rodarte España; Montserrat Silva Cordero | 16h |  |
| 26 | 2.1.2.1.4 | Diseño de plantemiento |  | 3d | 2020-09-29 | 2020-10-05 | 25 |  | 110d | 0d |  | Hilario Abraham Rodarte España; Montserrat Silva Cordero | 48h |  |

| ID | WBS | Task | Duration | Start | Finish | Predecessors | Total slack | Free slack | Resources | Work |
| --- | --- | --- | --- | --- | --- | --- | --- | --- | --- | --- |
| 27 | 2.1.3 | **Definir interfaces internas y externas.** | 3d | 2020-09-15 | 2020-09-18 |  | 110d |  | Hilario Abraham Rodarte España; Montserrat Silva Cordero | 56h |
| 28 | 2.1.3.1 | Diseño de logotipo e iconos | 0.5d | 2020-09-15 | 2020-09-15 | 57 | 110d | 0d | Montserrat Silva Cordero | 4h |
| 29 | 2.1.3.2 | Diseño de tipografía y colores | 0.5d | 2020-09-15 | 2020-09-16 | 28 | 110d | 0d | Montserrat Silva Cordero | 4h |
| 30 | 2.1.3.3 | Diseño de interfaz gráfica detallada | 2d | 2020-09-16 | 2020-09-18 | 29 | 110d | 0d | Montserrat Silva Cordero | 16h |
| 31 | 2.1.4 | Verificar el Diseño de Software v2 | 1d | 2020-10-05 | 2020-10-06 | 26 | 110d | 0d | Héctor Alejandro Acuña Cid; Hilario Abraham Rodarte España; Julia Elena Hernández Ríos; Montserrat Silva Cordero | 32h |
| 32 | 2.1.5 | Validar del Diseño de Software v2 | 1d | 2020-10-06 | 2020-10-07 | 31 | 110d |  | Héctor Alejandro Acuña Cid; Hilario Abraham Rodarte España; Montserrat Silva Cordero | 24h |
| 33 | 2.2 | **Diseñar Casos de Prueba y Procedimientos de Prueba** | 16d | 2020-07-31 | 2020-09-15 |  | 0d |  | Hilario Abraham Rodarte España; Montserrat Silva Cordero | 1216h |
| 34 | 2.2.1 | **Diseñar los Casos de Prueba** | 15d | 2020-07-31 | 2020-09-14 |  | 0d |  | Hilario Abraham Rodarte España; Montserrat Silva Cordero | 928h |
| 35 | 2.2.1.1 | **Establecer los procedimientos de prueba** | 15d | 2020-07-31 | 2020-09-14 |  | 0d |  | Hilario Abraham Rodarte España; Montserrat Silva Cordero | 688h |
| 36 | 2.2.1.1.1 | **Establecer los procedimientos de p. unitaria** | 7d | 2020-07-31 | 2020-08-26 |  | 0d |  | Hilario Abraham Rodarte España; Montserrat Silva Cordero | 200h |
| 37 | 2.2.1.1.1.1 | Sistema de visión artificial | 1d | 2020-07-31 | 2020-08-04 | 19 | 0d |  | Hilario Abraham Rodarte España | 8h |
| 38 | 2.2.1.1.1.2 | Sistema de reconocimiento del cuerpo humano | 1d | 2020-08-05 | 2020-08-07 | 37 | 0d |  | Hilario Abraham Rodarte España | 8h |
| 39 | 2.2.1.1.1.3 | Interfaz gráfica de usuario | 2d | 2020-07-31 | 2020-08-07 | 19 | 135d | 0d | Montserrat Silva Cordero | 16h |
| 40 | 2.2.1.1.1.4 | Modulo bluetooth | 1d | 2020-08-07 | 2020-08-12 | 38 | 0d |  | Hilario Abraham Rodarte España | 8h |
| 41 | 2.2.1.1.1.5 | Base de datos | 2d | 2020-08-07 | 2020-08-14 | 39 | 135d | 0d | Montserrat Silva Cordero | 16h |
| 42 | 2.2.1.1.1.6 | Sensor angular | 1d | 2020-08-12 | 2020-08-14 | 40 | 0d |  | Hilario Abraham Rodarte España | 8h |
| 43 | 2.2.1.1.1.7 | Arduino | 1d | 2020-08-17 | 2020-08-19 | 42 | 0d |  | Hilario Abraham Rodarte España | 8h |
| 44 | 2.2.1.1.1.8 | Módulo bluetooth | 1d | 2020-08-19 | 2020-08-24 | 43 | 0d |  | Hilario Abraham Rodarte España | 8h |
| 45 | 2.2.1.1.1.9 | Respaldo y restauración | 1d | 2020-08-24 | 2020-08-26 | 44 | 0d |  | Hilario Abraham Rodarte España | 8h |
| 46 | 2.2.1.1.2 | **Establecer los procedimientos de p.Integración** | 10d | 2020-08-17 | 2020-09-11 |  | 3d |  | Hilario Abraham Rodarte España; Montserrat Silva Cordero | 232h |
| 47 | 2.2.1.1.2.1 | Sistema de visión artificial | 1d | 2020-08-27 | 2020-08-31 | 45 | 0d |  | Hilario Abraham Rodarte España | 8h |
| 48 | 2.2.1.1.2.2 | Sistema de reconocimiento del cuerpo humano | 1d | 2020-08-31 | 2020-09-03 | 47 | 0d |  | Hilario Abraham Rodarte España | 8h |
| 49 | 2.2.1.1.2.3 | Interfaz gráfica de usuario | 1d | 2020-08-17 | 2020-08-19 | 41 | 135d | 0d | Montserrat Silva Cordero | 8h |
| 50 | 2.2.1.1.2.4 | Modulo bluetooth | 1d | 2020-09-03 | 2020-09-07 | 48 | 0d |  | Hilario Abraham Rodarte España | 8h |
| 51 | 2.2.1.1.2.5 | Base de datos | 1d | 2020-08-19 | 2020-08-24 | 49 | 135d |  | Montserrat Silva Cordero | 8h |
| 52 | 2.2.1.1.2.6 | Sensor angular | 1d | 2020-09-07 | 2020-09-08 | 50 | 0d |  | Hilario Abraham Rodarte España | 8h |
| 53 | 2.2.1.1.2.7 | Arduino | 1d | 2020-09-08 | 2020-09-09 | 52 | 0d |  | Hilario Abraham Rodarte España | 8h |
| 54 | 2.2.1.1.2.8 | Módulo bluetooth | 1d | 2020-09-09 | 2020-09-10 | 53 | 0d |  | Hilario Abraham Rodarte España | 8h |
| 55 | 2.2.1.1.2.9 | Respaldo y restauración | 1d | 2020-09-10 | 2020-09-11 | 54 | 0d |  | Hilario Abraham Rodarte España | 8h |
| 56 | 2.2.1.1.3 | Establecer los procedimientos de p.Sistema | 1d | 2020-09-11 | 2020-09-14 | 55 | 0d |  | Hilario Abraham Rodarte España; Montserrat Silva Cordero | 16h |
| 57 | 2.2.2 | Verificar Casos de Prueba y Procedimientos de Prueba | 1d | 2020-09-14 | 2020-09-15 | 56 | 0d |  | Héctor Alejandro Acuña Cid; Hilario Abraham Rodarte España; Julia Elena Hernández Ríos; Montserrat Silva Cordero | 32h |

| ID | WBS | Task | Duration | Start | Finish | Predecessors | Total slack | Free slack | Constraint | Resources | Work |
| --- | --- | --- | --- | --- | --- | --- | --- | --- | --- | --- | --- |
| 58 | 2.3 | **Actualizar el Repositorio** | 3d | 2020-09-15 | 2020-09-18 | 57 | 0d |  |  | Hilario Abraham Rodarte España; Montserrat Silva Cordero | 96h |
| 59 | 2.3.1 | Actualizar el Registro de Trazabilidad incorporando los Casos de Prueba y Procedimientos de Prueba. | 1d | 2020-09-15 | 2020-09-16 |  | 0d |  |  | Hilario Abraham Rodarte España; Montserrat Silva Cordero | 16h |
| 60 | 2.3.2 | Incorporar el Diseño de Software y el Registro de Trazabilidad a la Configuración de Software como parte de la línea base. | 1d | 2020-09-16 | 2020-09-17 | 59 | 0d |  |  | Hilario Abraham Rodarte España; Montserrat Silva Cordero | 16h |
| 61 | 2.3.3 | Incorporar los Casos de Prueba y Procedimientos de Prueba al Repositorio del Proyecto. | 1d | 2020-09-17 | 2020-09-18 | 60 | 0d |  |  | Hilario Abraham Rodarte España; Montserrat Silva Cordero | 16h |
| 62 | 3 | **Construcción** | 111d | 2020-09-18 | 2021-03-29 | 61 | 0d |  |  |  | 6800h |
| 63 | 3.1 | **Codificación** | 77d | 2020-09-18 | 2021-02-02 |  | 0d |  |  |  | 2368h |
| 64 | 3.1.1 | **Construir y codificar los componentes o módulos de Software** | 77d | 2020-09-18 | 2021-02-02 |  | 0d |  |  | Hilario Abraham Rodarte España; Montserrat Silva Cordero | 2128h |
| 65 | 3.1.1.1 | Construcción de módulo de base de datos | 5d | 2020-09-18 | 2020-09-25 |  | 0d |  | start no earlier than 2020-07-03 | Montserrat Silva Cordero | 40h |
| 66 | 3.1.1.2 | Construcción de sistema de visión artificial | 10d | 2020-09-25 | 2020-10-13 | 65 | 0d |  |  | Hilario Abraham Rodarte España | 80h |
| 67 | 3.1.1.3 | Construcción de sistema de reconocimiento | 30d | 2020-10-13 | 2020-12-03 | 66 | 0d |  | start no earlier than 2020-07-01 | Hilario Abraham Rodarte España; Montserrat Silva Cordero | 480h |
| 68 | 3.1.1.4 | Codificación de módulo de diagnostico | 5d | 2020-12-03 | 2020-12-11 | 67 | 0d |  |  | Hilario Abraham Rodarte España; Montserrat Silva Cordero | 80h |
| 69 | 3.1.1.5 | Construcción de interfaz grafica de usuario | 8d | 2020-12-11 | 2020-12-29 | 68 | 0d |  |  | Montserrat Silva Cordero | 64h |
| 70 | 3.1.1.6 | Codificar módulo bluetooth para método de entrada | 3d | 2020-12-29 | 2021-01-06 | 69 | 0d |  |  | Hilario Abraham Rodarte España | 24h |
| 71 | 3.1.1.7 | Codificación de sistema embebido | 8d | 2021-01-06 | 2021-01-19 | 70 | 0d |  |  | Hilario Abraham Rodarte España | 64h |
| 72 | 3.1.1.8 | Codificación de módulo generador de reportes | 3d | 2021-01-20 | 2021-01-25 | 71 | 0d |  |  | Montserrat Silva Cordero | 24h |
| 73 | 3.1.1.9 | Codificación de módulo de respaldo y restauración | 5d | 2021-01-25 | 2021-02-02 | 72 | 0d |  |  | Hilario Abraham Rodarte España | 40h |
| 74 | 3.1.2 | **Construir los componentes o módulos de Hardware** | 15d | 2020-12-03 | 2021-01-04 |  | 62d |  |  | Hilario Abraham Rodarte España | 240h |
| 75 | 3.1.2.1 | Integración de módulo bluetooth | 4d | 2020-12-03 | 2020-12-10 | 67 | 62d | 0d |  | Hilario Abraham Rodarte España | 32h |
| 76 | 3.1.2.2 | Integración de sensor angular | 4d | 2020-12-10 | 2020-12-17 | 75 | 62d | 0d |  | Hilario Abraham Rodarte España | 32h |
| 77 | 3.1.2.3 | Montaje en plicómetro | 7d | 2020-12-17 | 2021-01-04 | 76 | 62d |  |  | Hilario Abraham Rodarte España | 56h |
| 78 | 3.2 | **Realizar Pruebas** | 106d | 2020-09-25 | 2021-03-29 |  | 11d |  |  | Hilario Abraham Rodarte España; Montserrat Silva Cordero | 4432h |
| 79 | 3.2.1 | **Aplicar Casos de Pruebas Unitarias** | 74d | 2020-09-25 | 2021-02-05 |  | 43d |  |  | Hilario Abraham Rodarte España; Montserrat Silva Cordero | 1584h |
| 80 | 3.2.1.1 | **Prueba de módulo de base de datos** | 4d | 2020-09-25 | 2020-10-02 |  | 70d |  |  |  | 48h |
| 81 | 3.2.1.1.1 | Codificar las Pruebas | 2d | 2020-09-25 | 2020-09-29 | 65 | 70d | 0d |  | Hilario Abraham Rodarte España | 16h |
| 82 | 3.2.1.1.2 | Ejecutar las Pruebas | 2d | 2020-09-29 | 2020-10-02 | 81 | 70d |  |  | Hilario Abraham Rodarte España | 16h |
| 83 | 3.2.1.1.3 | Analizar y documentar los resultados | 2d | 2020-09-29 | 2020-10-02 | 81 | 70d |  |  | Hilario Abraham Rodarte España | 16h |

| ID | WBS | Task | Duration | Start | Finish | Predecessors | Total slack | Free slack | Resources | Work |
| --- | --- | --- | --- | --- | --- | --- | --- | --- | --- | --- |
| 84 | 3.2.1.2 | **Prueba de sistema de visión artificial** | 3d | 2020-10-13 | 2020-10-19 |  | 80d | 61d |  | 32h |
| 85 | 3.2.1.2.1 | Codificar las Pruebas | 2d | 2020-10-13 | 2020-10-15 | 66 | 80d | 0d | Montserrat Silva Cordero | 16h |
| 86 | 3.2.1.2.2 | Ejecutar las Pruebas | 1d | 2020-10-16 | 2020-10-19 | 85 | 80d |  | Montserrat Silva Cordero | 8h |
| 87 | 3.2.1.2.3 | Analizar y documentar los resultados | 1d | 2020-10-16 | 2020-10-19 | 85 | 80d |  | Montserrat Silva Cordero | 8h |
| 88 | 3.2.1.3 | **Prueba de sistema de reconocimiento** | 3d | 2020-12-03 | 2020-12-09 |  | 74d |  |  | 64h |
| 89 | 3.2.1.3.1 | Codificar las Pruebas | 1d | 2020-12-03 | 2020-12-04 | 67 | 74d | 0d | Montserrat Silva Cordero; Hilario Abraham Rodarte España | 16h |
| 90 | 3.2.1.3.2 | Ejecutar las Pruebas | 1d | 2020-12-04 | 2020-12-07 | 89 | 75d |  | Montserrat Silva Cordero; Hilario Abraham Rodarte España | 16h |
| 91 | 3.2.1.3.3 | Analizar y documentar los resultados | 2d | 2020-12-04 | 2020-12-09 | 89 | 74d |  | Montserrat Silva Cordero; Hilario Abraham Rodarte España | 32h |
| 92 | 3.2.1.4 | **Prueba de módulo de diagnostico** | 4d | 2020-12-11 | 2020-12-18 |  | 68d |  |  | 96h |
| 93 | 3.2.1.4.1 | Codificar las Pruebas | 2d | 2020-12-11 | 2020-12-16 | 68 | 68d | 0d | Hilario Abraham Rodarte España; Montserrat Silva Cordero | 32h |
| 94 | 3.2.1.4.2 | Ejecutar las Pruebas | 2d | 2020-12-16 | 2020-12-18 | 93 | 68d |  | Hilario Abraham Rodarte España; Montserrat Silva Cordero | 32h |
| 95 | 3.2.1.4.3 | Analizar y documentar los resultados | 2d | 2020-12-16 | 2020-12-18 | 93 | 68d |  | Hilario Abraham Rodarte España; Montserrat Silva Cordero | 32h |
| 96 | 3.2.1.5 | **Prueba de interfaz grafica de usuario** | 4d | 2020-12-29 | 2021-01-07 |  | 60d |  |  | 48h |
| 97 | 3.2.1.5.1 | Codificar las Pruebas | 2d | 2020-12-29 | 2021-01-04 | 69 | 60d | 0d | Hilario Abraham Rodarte España | 16h |
| 98 | 3.2.1.5.2 | Ejecutar las Pruebas | 2d | 2021-01-04 | 2021-01-07 | 97 | 60d |  | Hilario Abraham Rodarte España | 16h |
| 99 | 3.2.1.5.3 | Analizar y documentar los resultados | 2d | 2021-01-04 | 2021-01-07 | 97 | 60d |  | Hilario Abraham Rodarte España | 16h |
| 100 | 3.2.1.6 | **Prueba de módulo bluetooth para método de entrada** | 4d | 2021-01-06 | 2021-01-13 |  | 57d |  |  | 48h |
| 101 | 3.2.1.6.1 | Codificar las Pruebas | 2d | 2021-01-06 | 2021-01-08 | 70 | 57d | 0d | Montserrat Silva Cordero | 16h |
| 102 | 3.2.1.6.2 | Ejecutar las Pruebas | 2d | 2021-01-08 | 2021-01-13 | 101 | 57d |  | Montserrat Silva Cordero | 16h |
| 103 | 3.2.1.6.3 | Analizar y documentar los resultados | 2d | 2021-01-08 | 2021-01-13 | 101 | 57d |  | Montserrat Silva Cordero | 16h |
| 104 | 3.2.1.7 | **Prueba de sistema embebido** | 2d | 2021-01-20 | 2021-01-22 |  | 51d |  |  | 24h |
| 105 | 3.2.1.7.1 | Codificar las Pruebas | 1d | 2021-01-20 | 2021-01-21 | 71 | 51d | 0d | Montserrat Silva Cordero | 8h |
| 106 | 3.2.1.7.2 | Ejecutar las Pruebas | 1d | 2021-01-21 | 2021-01-22 | 105 | 51d |  | Montserrat Silva Cordero | 8h |
| 107 | 3.2.1.7.3 | Analizar y documentar los resultados | 1d | 2021-01-21 | 2021-01-22 | 105 | 51d |  | Montserrat Silva Cordero | 8h |

| ID | WBS | Task | Duration | Start | Finish | Predecessors | Total slack | Free slack | Resources | Work |
| --- | --- | --- | --- | --- | --- | --- | --- | --- | --- | --- |
| 108 | 3.2.1.8 | **Prueba de módulo generador de reportes** | 2d | 2021-01-25 | 2021-01-28 |  | 48d |  |  | 24h |
| 109 | 3.2.1.8.1 | Codificar las Pruebas | 1d | 2021-01-25 | 2021-01-26 | 72 | 48d | 0d | Hilario Abraham Rodarte España | 8h |
| 110 | 3.2.1.8.2 | Ejecutar las Pruebas | 1d | 2021-01-26 | 2021-01-28 | 109 | 48d |  | Hilario Abraham Rodarte España | 8h |
| 111 | 3.2.1.8.3 | Analizar y documentar los resultados | 1d | 2021-01-26 | 2021-01-28 | 109 | 48d |  | Hilario Abraham Rodarte España | 8h |
| 112 | 3.2.1.9 | **Prueba de módulo de respaldo y restauración** | 2d | 2021-02-02 | 2021-02-05 |  | 0d |  |  | 24h |
| 113 | 3.2.1.9.1 | Codificar las Pruebas | 1d | 2021-02-02 | 2021-02-04 | 73 | 0d |  | Montserrat Silva Cordero | 8h |
| 114 | 3.2.1.9.2 | Ejecutar las Pruebas | 1d | 2021-02-04 | 2021-02-05 | 113 | 0d |  | Montserrat Silva Cordero | 8h |
| 115 | 3.2.1.9.3 | Analizar y documentar los resultados | 1d | 2021-02-04 | 2021-02-05 | 113 | 0d |  | Montserrat Silva Cordero | 8h |
| 116 | 3.2.2 | **Realizar pruebas de Integración** | 25d | 2021-02-05 | 2021-03-18 | 112 | 0d |  | Hilario Abraham Rodarte España; Montserrat Silva Cordero | 856h |
| 117 | 3.2.2.1 | **Prueba de módulo de base de datos** | 4d | 2021-02-05 | 2021-02-12 |  | 0d |  | Hilario Abraham Rodarte España | 64h |
| 118 | 3.2.2.1.1 | Codificar las Pruebas | 2d | 2021-02-05 | 2021-02-09 | 80 | 0d |  | Hilario Abraham Rodarte España | 16h |
| 119 | 3.2.2.1.2 | Ejecutar las Pruebas | 2d | 2021-02-09 | 2021-02-12 | 118 | 0d |  | Hilario Abraham Rodarte España | 16h |
| 120 | 3.2.2.1.3 | Analizar y documentar los resultados | 2d | 2021-02-09 | 2021-02-12 | 118 | 0d |  |  |  |
| 121 | 3.2.2.2 | **Prueba de sistema de visión artificial** | 3d | 2021-02-05 | 2021-02-10 |  | 19d | 0d |  | 32h |
| 122 | 3.2.2.2.1 | Codificar las Pruebas | 2d | 2021-02-05 | 2021-02-09 | 84 | 19d | 0d | Montserrat Silva Cordero | 16h |
| 123 | 3.2.2.2.2 | Ejecutar las Pruebas | 1d | 2021-02-09 | 2021-02-10 | 122 | 19d |  | Montserrat Silva Cordero | 8h |
| 124 | 3.2.2.2.3 | Analizar y documentar los resultados | 1d | 2021-02-09 | 2021-02-10 | 122 | 19d |  | Montserrat Silva Cordero | 8h |
| 125 | 3.2.2.3 | **Prueba de sistema de reconocimiento** | 3d | 2021-02-11 | 2021-02-16 |  | 19d |  |  | 64h |
| 126 | 3.2.2.3.1 | Codificar las Pruebas | 1d | 2021-02-11 | 2021-02-12 | 121 | 19d | 0d | Montserrat Silva Cordero; Hilario Abraham Rodarte España | 16h |
| 127 | 3.2.2.3.2 | Ejecutar las Pruebas | 1d | 2021-02-12 | 2021-02-15 | 126 | 20d |  | Montserrat Silva Cordero; Hilario Abraham Rodarte España | 16h |
| 128 | 3.2.2.3.3 | Analizar y documentar los resultados | 2d | 2021-02-12 | 2021-02-16 | 126 | 19d |  | Montserrat Silva Cordero; Hilario Abraham Rodarte España | 32h |
| 129 | 3.2.2.4 | **Prueba de interfaz grafica de usuario** | 4d | 2021-02-12 | 2021-02-19 |  | 0d |  |  | 48h |
| 130 | 3.2.2.4.1 | Codificar las Pruebas | 2d | 2021-02-12 | 2021-02-16 | 117 | 0d |  | Hilario Abraham Rodarte España | 16h |
| 131 | 3.2.2.4.2 | Ejecutar las Pruebas | 2d | 2021-02-16 | 2021-02-19 | 130 | 0d |  | Hilario Abraham Rodarte España | 16h |
| 132 | 3.2.2.4.3 | Analizar y documentar los resultados | 2d | 2021-02-16 | 2021-02-19 | 130 | 0d |  | Hilario Abraham Rodarte España | 16h |

| ID | WBS | Task | Duration | Start | Finish | Predecessors | Total slack | Constraint | Resources | Work |
| --- | --- | --- | --- | --- | --- | --- | --- | --- | --- | --- |
| 133 | 3.2.2.5 | **Prueba de módulo bluetooth para método de entrada** | 4d | 2021-02-19 | 2021-02-26 |  | 0d |  |  | 48h |
| 134 | 3.2.2.5.1 | Codificar las Pruebas | 2d | 2021-02-19 | 2021-02-23 | 129 | 0d |  | Montserrat Silva Cordero | 16h |
| 135 | 3.2.2.5.2 | Ejecutar las Pruebas | 2d | 2021-02-23 | 2021-02-26 | 134 | 0d |  | Montserrat Silva Cordero | 16h |
| 136 | 3.2.2.5.3 | Analizar y documentar los resultados | 2d | 2021-02-23 | 2021-02-26 | 134 | 0d |  | Montserrat Silva Cordero | 16h |
| 137 | 3.2.2.6 | **Prueba de sistema embebido** | 3d | 2021-02-26 | 2021-03-03 |  | 0d |  |  | 32h |
| 138 | 3.2.2.6.1 | Codificar las Pruebas | 2d | 2021-02-26 | 2021-03-02 | 133 | 0d |  | Montserrat Silva Cordero | 16h |
| 139 | 3.2.2.6.2 | Ejecutar las Pruebas | 1d | 2021-03-02 | 2021-03-03 | 138 | 0d |  | Montserrat Silva Cordero | 8h |
| 140 | 3.2.2.6.3 | Analizar y documentar los resultados | 1d | 2021-03-02 | 2021-03-03 | 138 | 0d |  | Montserrat Silva Cordero | 8h |
| 141 | 3.2.2.7 | **Prueba de módulo de diagnostico** | 4d | 2021-03-03 | 2021-03-10 |  | 0d |  |  | 96h |
| 142 | 3.2.2.7.1 | Codificar las Pruebas | 2d | 2021-03-03 | 2021-03-08 | 137 | 0d |  | Montserrat Silva Cordero; Hilario Abraham Rodarte España | 32h |
| 143 | 3.2.2.7.2 | Ejecutar las Pruebas | 2d | 2021-03-08 | 2021-03-10 | 142 | 0d |  | Montserrat Silva Cordero; Hilario Abraham Rodarte España | 32h |
| 144 | 3.2.2.7.3 | Analizar y documentar los resultados | 2d | 2021-03-08 | 2021-03-10 | 142 | 0d |  | Montserrat Silva Cordero; Hilario Abraham Rodarte España | 32h |
| 145 | 3.2.2.8 | **Prueba de módulo generador de reportes** | 4d | 2021-03-10 | 2021-03-16 |  | 0d |  |  | 48h |
| 146 | 3.2.2.8.1 | Codificar las Pruebas | 2d | 2021-03-10 | 2021-03-12 | 141 | 0d |  | Hilario Abraham Rodarte España | 16h |
| 147 | 3.2.2.8.2 | Ejecutar las Pruebas | 2d | 2021-03-12 | 2021-03-16 | 146 | 0d |  | Hilario Abraham Rodarte España | 16h |
| 148 | 3.2.2.8.3 | Analizar y documentar los resultados | 2d | 2021-03-12 | 2021-03-16 | 146 | 0d |  | Hilario Abraham Rodarte España | 16h |
| 149 | 3.2.2.9 | **Prueba de módulo de respaldo y restauración** | 2d | 2021-03-16 | 2021-03-18 |  | 0d |  |  | 24h |
| 150 | 3.2.2.9.1 | Codificar las Pruebas | 1d | 2021-03-16 | 2021-03-17 | 145 | 0d |  | Montserrat Silva Cordero | 8h |
| 151 | 3.2.2.9.2 | Ejecutar las Pruebas | 1d | 2021-03-17 | 2021-03-18 | 150 | 0d |  | Montserrat Silva Cordero | 8h |
| 152 | 3.2.2.9.3 | Analizar y documentar los resultados | 1d | 2021-03-17 | 2021-03-18 | 150 | 0d |  | Montserrat Silva Cordero | 8h |
| 153 | 3.2.3 | **Realizar pruebas de Sistema** | 6d | 2021-03-18 | 2021-03-26 | 116 | 0d |  | Hilario Abraham Rodarte España; Montserrat Silva Cordero | 240h |
| 154 | 3.2.3.1 | Establecer el ambiente de prueba. | 3d | 2021-03-18 | 2021-03-23 | 149 | 0d | start no earlier than 2020-09-30 | Hilario Abraham Rodarte España; Montserrat Silva Cordero | 48h |
| 155 | 3.2.3.2 | Ejecución de las iteraciones de pruebas | 3d | 2021-03-23 | 2021-03-26 | 154 | 0d | start no earlier than 2020-10-05 | Hilario Abraham Rodarte España; Montserrat Silva Cordero | 48h |
| 156 | 3.2.3.3 | Analizar y documentar los resultados | 3d | 2021-03-23 | 2021-03-26 | 154 | 0d | start no earlier than 2020-10-08 | Hilario Abraham Rodarte España; Montserrat Silva Cordero | 48h |
| 157 | 3.2.4 | Verificación y validación de resultado de pruebas | 1d | 2021-03-26 | 2021-03-29 | 156 | 11d |  | Héctor Alejandro Acuña Cid; Hilario Abraham Rodarte España; Julia Elena Hernández Ríos; Montserrat Silva Cordero | 32h |

| ID | WBS | Task | Duration | Start | Finish | Predecessors | Total slack | Free slack | Constraint | Resources | Work |
| --- | --- | --- | --- | --- | --- | --- | --- | --- | --- | --- | --- |
| 158 | 3.2.5 | **Cierre del procedimiento de pruebas** | 1d | 2021-03-26 | 2021-03-29 | 156 | 0d |  |  | Hilario Abraham Rodarte España; Montserrat Silva Cordero | 32h |
| 159 | 3.2.5.1 | Documentar los resultados en el Reporte de Pruebas. | 1d | 2021-03-26 | 2021-03-29 | 153 | 0d |  |  | Hilario Abraham Rodarte España; Montserrat Silva Cordero | 16h |
| 160 | 4 | **Despliegue** | 11d | 2021-03-29 | 2021-04-13 | 159 | 0d |  |  |  | 184h |
| 161 | 4.1 | **Cierre de proyecto** | 11d | 2021-03-29 | 2021-04-13 | 159 | 0d |  |  |  | 184h |
| 162 | 4.1.1 | **Documentar el Manual de Mantenimiento** | 5d | 2021-03-29 | 2021-04-05 |  | 0d |  |  |  | 112h |
| 163 | 4.1.1.1 | Realizar Manual de Mantenimiento. | 3d | 2021-03-29 | 2021-04-01 | 159 | 0d |  |  | Hilario Abraham Rodarte España; Montserrat Silva Cordero | 48h |
| 164 | 4.1.1.2 | Verificar Manual de Mantenimiento. | 1d | 2021-04-01 | 2021-04-02 | 163 | 0d |  |  | Hilario Abraham Rodarte España; Montserrat Silva Cordero; Héctor Alejandro Acuña Cid; Julia Elena Hernández Ríos | 32h |
| 165 | 4.1.1.3 | Aprobar Manual de Mantenimiento. | 1d | 2021-04-02 | 2021-04-05 | 164 | 0d |  |  | Hilario Abraham Rodarte España; Montserrat Silva Cordero; Héctor Alejandro Acuña Cid; Julia Elena Hernández Ríos | 32h |
| 166 | 4.1.2 | Incorporar el Manual de Mantenimiento a la línea base de la Configuración del Software | 1d | 2021-03-29 | 2021-03-30 | 158 | 10d |  |  | Montserrat Silva Cordero | 8h |
| 167 | 4.1.3 | **Entrega de Producto** | 2d | 2021-04-05 | 2021-04-07 |  | 0d |  |  |  | 16h |
| 168 | 4.1.3.1 | Comprender la Configuración de Software. | 2d | 2021-04-05 | 2021-04-07 | 162 | 0d |  |  | Montserrat Silva Cordero | 16h |
| 169 | 4.1.4 | **Formalizar la conclusión del proyecto** | 3d | 2021-04-07 | 2021-04-12 |  | 0d |  |  |  | 40h |
| 170 | 4.1.4.1 | Obtener la copia aprobada del Formulario de Instrucciones de Entrega | 1d | 2021-04-07 | 2021-04-08 | 168 | 0d |  |  | Montserrat Silva Cordero | 8h |
| 171 | 4.1.4.2 | Realizar entrega | 1d | 2021-04-08 | 2021-04-09 | 170 | 0d |  |  | Hilario Abraham Rodarte España; Montserrat Silva Cordero | 16h |
| 172 | 4.1.4.3 | Firma de Acta de Aceptación | 1d | 2021-04-09 | 2021-04-12 | 171 | 0d |  |  | Hilario Abraham Rodarte España; Montserrat Silva Cordero | 16h |
| 173 | 4.1.5 | Actualizar el Repositorio del Proyecto. | 1d | 2021-04-12 | 2021-04-13 | 169 | 0d |  |  | Hilario Abraham Rodarte España | 8h |
| 174 | 5 | Preparación de Reporte Final TT II | 5d | 2021-03-29 | 2021-04-05 | 159 | 0.69d | 0d | start no earlier than 2020-07-30 | Hilario Abraham Rodarte España; Montserrat Silva Cordero | 80h |
| 175 | 6 | Entrega Reporte Final TT II | 1d | 2021-02-08 | 2021-02-09 |  | 41.44d |  | start no earlier than 2021-02-08 | Hilario Abraham Rodarte España | 8h |
| 176 | 7 | Preparación Presentación TT II | 5d | 2021-04-05 | 2021-04-12 | 174 | 0.69d | 0d |  | Hilario Abraham Rodarte España; Montserrat Silva Cordero | 80h |
| 177 | 8 | Presentación TT II | 0.31d | 2021-04-12 | 2021-04-13 | 176 | 0.69d |  | finish no earlier than 2021-02-12 | Hilario Abraham Rodarte España; Montserrat Silva Cordero | 5h |
